# Rott project

Schedule from MS Project, 2020-03-17 to 2020-08-06, costs in ₽, A marks actual dates.

## Calendars

- Стандартный: Mon-Fri 09:00-13:00, 14:00-18:00; Sat-Sun off.

## Resources

| Resource | Unit | Rate |
| --- | --- | --- |
| Разработчик |  | 1000 |
| Руководитель проекта |  | 1500 |
| Ключ для ПО |  |  |
| Бизнес-консультант |  | 1000 |
| Сотрудник компании-консультант |  |  |
| Командировка |  |  |
| Облачное хранилище | Гб | 10 |
| Дизайнер |  | 2000 |

## Schedule

| ID | WBS | Task | Type | Duration | Start | Finish | Predecessors | Complete | Remaining | Baseline start | Baseline finish | Baseline duration | Total slack | Free slack | Constraint | Resources | Work | Actual work | Cost | Baseline cost | Actual cost |
| --- | --- | --- | --- | --- | --- | --- | --- | --- | --- | --- | --- | --- | --- | --- | --- | --- | --- | --- | --- | --- | --- |
| 1 | 1 | Визит в компанию |  | 5d | 2020-03-17 A | 2020-03-23 A |  | 100% |  | 2020-03-17 | 2020-03-23 | 5d |  |  | must start on 2020-03-17 | Руководитель проекта; Командировка [0.1%] | 40h | 40h | 100,000 | 100,000 | 60,000 |
| 2 | 2 | **Подготовка** |  | 22d | 2020-04-02 A | 2020-05-01 A | 1FS+7d | 100% |  | 2020-04-02 | 2020-05-01 | 22d |  |  |  |  | 474h | 474h | 507,000 | 507,000 | 507,000 |
| 3 | 2.1 | Расшифровать правил создания кодов |  | 10d | 2020-04-02 A | 2020-04-15 A |  | 100% |  | 2020-04-02 | 2020-04-15 | 10d |  |  |  | Руководитель проекта [43%]; Бизнес-консультант [200%] | 180h | 180h | 190,000 | 190,000 | 190,000 |
| 4 | 2.2 | Разработать техническое задание проекта |  | 5d | 2020-04-13 A | 2020-04-17 A | 3FS-3d | 100% |  | 2020-04-13 | 2020-04-17 | 5d |  |  |  | Руководитель проекта [43%]; Разработчик [200%] | 94h | 94h | 101,000 | 101,000 | 101,000 |
| 5 | 2.3 | Выбрать язык, средства, создать дизайн решения |  | 6d | 2020-04-20 A | 2020-04-27 A | 4 | 100% |  | 2020-04-20 | 2020-04-27 | 6d |  |  |  | Руководитель проекта [25%]; Разработчик | 44h | 44h | 50,000 | 50,000 | 50,000 |
| 6 | 2.4 | Распределить роли |  | 10d | 2020-04-20 A | 2020-05-01 A | 5SS | 100% |  | 2020-04-20 | 2020-05-01 | 10d |  |  |  | Разработчик; Руководитель проекта [25%] | 60h | 60h | 70,000 | 70,000 | 70,000 |
| 7 | 2.5 | Выбрано разделение ролей, создан удаленный репозиторий для совместной работы | milestone | 0d | 2020-05-01 A | 2020-05-01 A | 6, 4, 5 | 100% |  | 2020-05-01 | 2020-05-01 | 0d |  |  | finish no later than 2020-05-07 |  |  |  |  |  |  |
| 8 | 2.6 | Разобраться с SAP |  | 4d | 2020-04-28 A | 2020-05-01 A | 7FF | 100% |  | 2020-04-28 | 2020-05-01 | 4d |  |  |  | Бизнес-консультант [200%]; Разработчик | 96h | 96h | 96,000 | 96,000 | 96,000 |
| 9 | 3 | **Версия 0.1** |  | 19d | 2020-05-06 A | 2020-06-01 A | 7FS+2d | 100% |  | 2020-05-06 | 2020-06-01 | 19d |  |  |  |  | 268h | 268h | 288,150 | 288,150 | 280,150 |
| 10 | 3.1 | Планирование задач |  | 6d | 2020-05-06 A | 2020-05-13 A |  | 100% |  | 2020-05-06 | 2020-05-13 | 6d |  |  |  | Разработчик [200%]; Руководитель проекта [50%] | 48h | 48h | 60,000 | 60,000 | 60,000 |
| 11 | 3.2 | Разработка |  | 3.5d | 2020-05-14 A | 2020-05-28 A | 10 | 100% |  | 2020-05-14 | 2020-05-22 | 3.5d |  |  |  | Бизнес-консультант [200%]; Ключ для ПО [0.1%]; Облачное хранилище [15 Гб]; Разработчик [300%] | 112h | 112h | 120,150 | 120,150 | 112,150 |
| 12 | 3.3 | Представить инкремент |  | 6d | 2020-05-25 A | 2020-06-01 A | 11 | 100% |  | 2020-05-25 | 2020-06-01 | 6d |  |  |  | Бизнес-консультант [200%]; Разработчик; Руководитель проекта [50%]; Сотрудник компании-консультант [50%] | 108h | 108h | 108,000 | 108,000 | 108,000 |
| 13 | 3.4 | Версия 0.1 одобрена | milestone | 0d | 2020-06-01 A | 2020-06-01 A | 10, 11, 12 | 100% |  | 2020-06-01 | 2020-06-01 | 0d |  |  | finish no later than 2020-06-27 |  |  |  |  |  |  |
| 14 | 4 | **Версия 0.2** |  | 15.5d | 2020-06-04 | 2020-06-25 | 13FS+2d |  |  | 2020-06-04 | 2020-06-25 | 15.5d | 0d |  |  |  | 268h |  | 280,150 | 280,150 |  |
| 15 | 4.1 | Планирование |  | 6d | 2020-06-04 | 2020-06-11 |  |  |  | 2020-06-04 | 2020-06-11 | 6d | 0d |  |  | Разработчик [300%]; Руководитель проекта [50%] | 48h |  | 60,000 | 60,000 |  |
| 16 | 4.2 | Разработка |  | 3.5d | 2020-06-12 | 2020-06-17 | 15 |  |  | 2020-06-12 | 2020-06-17 | 3.5d | 0d |  |  | Бизнес-консультант [200%]; Разработчик [300%]; Облачное хранилище [15 Гб] | 112h |  | 112,150 | 112,150 |  |
| 17 | 4.3 | Представить инкремент |  | 6d | 2020-06-17 | 2020-06-25 | 16 |  |  | 2020-06-17 | 2020-06-25 | 6d | 0d |  |  | Бизнес-консультант [200%]; Разработчик; Руководитель проекта [50%]; Сотрудник компании-консультант [50%] | 108h |  | 108,000 | 108,000 |  |
| 18 | 4.4 | Версия 0.2 одобрена | milestone | 0d | 2020-06-25 | 2020-06-25 | 15, 16, 17 |  |  | 2020-06-25 | 2020-06-25 | 0d | 0d |  | finish no later than 2020-06-30 |  |  |  |  |  |  |
| 19 | 5 | **Версия 0.3** |  | 19d | 2020-06-29 A | 2020-07-24 | 18FS+2d | 68% | 6d | 2020-06-29 | 2020-07-24 | 19d | 2.5d |  |  |  | 588h | 480h | 704,000 | 704,000 | 596,000 |
| 20 | 5.1 | Планирование |  | 6d | 2020-06-29 A | 2020-07-07 A |  | 100% |  | 2020-06-29 | 2020-07-07 | 6d |  |  |  | Разработчик [300%]; Руководитель проекта [50%]; Дизайнер | 144h | 144h | 204,000 | 204,000 | 204,000 |
| 21 | 5.2 | Разработка |  | 7d | 2020-07-07 A | 2020-07-16 A | 20 | 100% |  | 2020-07-07 | 2020-07-16 | 7d |  |  |  | Бизнес-консультант [200%]; Разработчик [300%]; Дизайнер | 336h | 336h | 392,000 | 392,000 | 392,000 |
| 22 | 5.3 | Представить инкремент |  | 6d | 2020-07-16 | 2020-07-24 | 21 |  |  | 2020-07-16 | 2020-07-24 | 6d | 2.5d | 0d |  | Бизнес-консультант [200%]; Разработчик; Руководитель проекта [50%]; Сотрудник компании-консультант [50%] | 108h |  | 108,000 | 108,000 |  |
| 23 | 5.4 | Версия 0.3 одобрена | milestone | 0d | 2020-07-24 | 2020-07-24 | 20, 21, 22 |  |  | 2020-07-24 | 2020-07-24 | 0d | 2.5d |  |  |  |  |  |  |  |  |
| 24 | 6 | Доработать требования фидбэка |  | 7d | 2020-07-29 | 2020-08-06 | 19 |  |  | 2020-07-29 | 2020-08-06 | 7d | 0d |  | start no earlier than 2020-07-29 | Бизнес-консультант [200%]; Разработчик [300%]; Руководитель проекта | 168h |  | 196,000 | 196,000 |  |

Notes:
- 10: Требования: / If a product id is inserted, the application will show all specifcations of that product. The application is able to generate unique product ids. Unique codes must include all parameters.
- 15: if the specifications are inserted, the application shows the products with those exact specifications. / The application is able to generate product descriptions by inserting specific parameters
- 20: Application must be available in Dutch and English / Application must be compatible with SAP (SAP is software) / When a product id is inserted, the application will show if that certain product is present in SAP / If the SAP database doesn't contain that product, the application will sent a message to the IT-compartment requesting to add the product to the SAP database

| ID | WBS | Task | Duration | Start | Finish | Complete | Remaining | Baseline start | Baseline finish | Baseline duration | Total slack | Constraint | Resources | Work | Actual work | Cost | Baseline cost | Actual cost |
| --- | --- | --- | --- | --- | --- | --- | --- | --- | --- | --- | --- | --- | --- | --- | --- | --- | --- | --- |
| 25 | 7 | **Встреча в Skype** | 70.12d | 2020-04-14 A | 2020-07-21 | 50% | 35.06d | 2020-04-14 | 2020-07-21 | 70.12d | 12.88d |  |  | 20h | 10h | 22,000 | 22,000 | 11,000 |
| 26 | 7.1 | Встреча в Skype 1 | 1h | 2020-04-14 A | 2020-04-14 A | 100% |  | 2020-04-14 | 2020-04-14 | 1h |  | start no earlier than 2020-04-14 | Руководитель проекта; Разработчик; Бизнес-консультант | 2.5h | 2.5h | 2,750 | 2,750 | 2,750 |
| 27 | 7.2 | Встреча в Skype 2 | 1h | 2020-04-28 A | 2020-04-28 A | 100% |  | 2020-04-28 | 2020-04-28 | 1h |  | start no earlier than 2020-04-28 | Руководитель проекта; Разработчик; Бизнес-консультант | 2.5h | 2.5h | 2,750 | 2,750 | 2,750 |
| 28 | 7.3 | Встреча в Skype 3 | 1h | 2020-05-12 A | 2020-05-12 A | 100% |  | 2020-05-12 | 2020-05-12 | 1h |  | start no earlier than 2020-05-12 | Руководитель проекта; Разработчик; Бизнес-консультант | 2.5h | 2.5h | 2,750 | 2,750 | 2,750 |
| 29 | 7.4 | Встреча в Skype 4 | 1h | 2020-05-26 A | 2020-05-26 A | 100% |  | 2020-05-26 | 2020-05-26 | 1h |  | start no earlier than 2020-05-26 | Руководитель проекта; Разработчик; Бизнес-консультант | 2.5h | 2.5h | 2,750 | 2,750 | 2,750 |
| 30 | 7.5 | Встреча в Skype 5 | 1h | 2020-06-09 | 2020-06-09 |  |  | 2020-06-09 | 2020-06-09 | 1h | 42.88d | start no earlier than 2020-06-09 | Руководитель проекта; Разработчик; Бизнес-консультант | 2.5h |  | 2,750 | 2,750 |  |
| 31 | 7.6 | Встреча в Skype 6 | 1h | 2020-06-23 | 2020-06-23 |  |  | 2020-06-23 | 2020-06-23 | 1h | 32.88d | start no earlier than 2020-06-23 | Руководитель проекта; Разработчик; Бизнес-консультант | 2.5h |  | 2,750 | 2,750 |  |
| 32 | 7.7 | Встреча в Skype 7 | 1h | 2020-07-07 | 2020-07-07 |  |  | 2020-07-07 | 2020-07-07 | 1h | 22.88d | start no earlier than 2020-07-07 | Руководитель проекта; Разработчик; Бизнес-консультант | 2.5h |  | 2,750 | 2,750 |  |
| 33 | 7.8 | Встреча в Skype 8 | 1h | 2020-07-21 | 2020-07-21 |  |  | 2020-07-21 | 2020-07-21 | 1h | 12.88d | start no earlier than 2020-07-21 | Руководитель проекта; Разработчик; Бизнес-консультант | 2.5h |  | 2,750 | 2,750 |  |
